# WorkPlan_iPadPilot

Schedule from MS Project, 2013-08-05 to 2013-09-18, A marks actual dates.
Constellation Energy

## Calendars

- Standard: Mon-Fri 08:00-12:00, 13:00-17:00; Sat-Sun off.

## Resources

| Resource |
| --- |
| Erica Massenburg |
| Kumar Thakur |
| Chris Witte |
| Inna Olshansky |
| Vamsi Maddirala |
| Peter Harris |
| Dinko Kecanovic |
| BU |
| Steve Thomas |

## Schedule

| ID | WBS | Task | Duration | Start | Finish | Predecessors | Complete | Remaining | Total slack | Constraint | Resources | Work | Actual work |
| --- | --- | --- | --- | --- | --- | --- | --- | --- | --- | --- | --- | --- | --- |
| 1 | 1 | **iPad Pilot Project** | 33d? | 2013-08-05 A | 2013-09-18 |  | 14% | 28.23d? | 0d |  |  | 920h | 96h |
| 2 | 1.1 | Build Project Team | 1d? | 2013-08-05 | 2013-08-05 |  |  |  | 13d | start no earlier than 2013-08-05 |  |  |  |
| 3 | 1.2 | **Procure Hardware** | 10d? | 2013-08-08 | 2013-08-21 |  |  |  | 20d |  |  | 40h |  |
| 4 | 1.2.1 | Get capital codeblock | 1d? | 2013-08-08 | 2013-08-08 |  |  |  | 29d | start no earlier than 2013-08-08 | Kumar Thakur | 8h |  |
| 5 | 1.2.2 | Get quote | 1d? | 2013-08-15 | 2013-08-15 |  |  |  | 24d |  | Kumar Thakur; Chris Witte | 16h |  |
| 6 | 1.2.3 | Order iPads | 1d? | 2013-08-16 | 2013-08-16 |  |  |  | 23d | finish no earlier than 2013-08-16 | Erica Massenburg | 8h |  |
| 7 | 1.2.4 | Receive iPads | 1d? | 2013-08-21 | 2013-08-21 |  |  |  | 20d | start no earlier than 2013-08-21 | Erica Massenburg | 8h |  |
| 8 | 1.3 | **Functional Requirement** | 10d? | 2013-08-12 A | 2013-08-23 |  | 63% | 3.68d? | 18d |  |  | 152h | 96h |
| 9 | 1.3.1 | Document As-Is Process | 10d? | 2013-08-12 A | 2013-08-23 |  | 75% | 2.5d? | 18d | finish no earlier than 2013-08-23 | Inna Olshansky | 80h | 60h |
| 10 | 1.3.2 | Build Gap anaylis with To-Be | 6d? | 2013-08-16 A | 2013-08-23 |  | 75% | 1.5d? | 18d | finish no earlier than 2013-08-23 | Inna Olshansky | 48h | 36h |
| 11 | 1.3.3 | Review To-Be with Stakeholders and Signoff | 3d? | 2013-08-21 | 2013-08-23 |  |  |  | 18d | finish no earlier than 2013-08-23 | Inna Olshansky | 24h |  |
| 12 | 1.4 | **Build** | 18d? | 2013-08-14 | 2013-09-06 |  |  |  | 8d |  |  | 464h |  |
| 13 | 1.4.1 | Technical Design | 7d? | 2013-08-14 | 2013-08-22 |  |  |  | 19d | finish no earlier than 2013-08-22 | Kumar Thakur; Vamsi Maddirala; Peter Harris; Dinko Kecanovic | 224h |  |
| 14 | 1.4.2 | Develop UI | 10d? | 2013-08-26 | 2013-09-06 |  |  |  | 8d | finish no earlier than 2013-09-06 | Peter Harris; Dinko Kecanovic | 160h |  |
| 15 | 1.4.3 | Develop Backend | 10d? | 2013-08-26 | 2013-09-06 |  |  |  | 8d | finish no earlier than 2013-09-06 | Vamsi Maddirala | 80h |  |
| 16 | 1.5 | **Test** | 13d? | 2013-08-26 | 2013-09-11 |  |  |  | 5d |  |  | 256h |  |
| 17 | 1.5.1 | Build Test Case | 10d? | 2013-08-26 | 2013-09-06 |  |  |  | 8d | finish no earlier than 2013-09-06 | Inna Olshansky | 80h |  |
| 18 | 1.5.2 | Create Test Scenarios | 10d? | 2013-08-26 | 2013-09-06 |  |  |  | 8d | start no earlier than 2013-08-26 | Inna Olshansky | 80h |  |
| 19 | 1.5.3 | Create Test Process | 10d? | 2013-08-26 | 2013-09-06 |  |  |  | 7d | start no earlier than 2013-08-26 | Inna Olshansky | 80h |  |
| 20 | 1.5.4 | Execute Testing | 1d? | 2013-09-11 | 2013-09-11 | 19 |  |  | 5d | finish no earlier than 2013-09-11 | Inna Olshansky; BU | 16h |  |
| 21 | 1.6 | Present Pilot | 1d? | 2013-09-18 | 2013-09-18 |  |  |  | 0d | start no earlier than 2013-09-18 | Steve Thomas | 8h |  |
